# Ke Hoach SRS

How a schedule from MS Project changed from version to version. A marks actual dates.

## Version 1 (saved 2020-01-09, file Ke Hoach SRS.mpp)

| ID | WBS | Task | Duration | Start | Finish | Complete | Total float |
| --- | --- | --- | --- | --- | --- | --- | --- |
| 1 | 1 | **Dự án đánh giá chất lượng dịch vụ** | 70d? | 2019-11-30 | 2020-03-04 | 7% |  |
| 2 | 1.1 | **Website quản trị** | 1d? | 2019-11-30 | 2019-11-30 | 7% |  |
| 3 | 1.1.1 | **Phân tích thiết kế** | 1d? | 2019-11-30 | 2019-11-30 | 5% |  |
| 4 |  | Yêu cầu bài toán | 1d | 2019-11-13 A | 2019-11-13 A | 100% |  |
| 5 |  | Xây dựng Database | 1d | 2019-11-13 A | 2019-11-13 A | 100% |  |
| 6 | 1.1.1.3 | **Viết tài liệu mô tả chức năng** | 4d? | 2020-01-08 | 2020-01-11 |  |  |
| 7 | 1.1.1.3.1 | **Chức năng đăng nhập** | 1d? | 2020-01-08 | 2020-01-08 |  |  |
| 8 |  | Đăng nhập | 1d? | 2020-01-08 | 2020-01-08 |  |  |
| 9 |  | Đăng ký | 1d? | 2020-01-08 | 2020-01-08 |  |  |
| 10 | 1.1.1.3.2 | **Chức năng quản lý đối tượng phản hồi** | 1d? | 2020-01-09 | 2020-01-09 |  |  |
| 11 |  | Danh sách đối tượng | 1d? | 2020-01-09 | 2020-01-09 |  |  |
| 12 |  | Thêm mới đối tượng | 1d? | 2020-01-09 | 2020-01-09 |  |  |
| 13 | 1.1.1.3.3 | **Chức năng quản lý khảo sát** | 2d? | 2020-01-08 | 2020-01-09 |  |  |
| 14 |  | Danh sách khảo sát | 1d? | 2020-01-08 | 2020-01-08 |  |  |
| 15 |  | Thêm mới khảo sát | 1d? | 2020-01-08 | 2020-01-08 |  |  |
| 16 |  | Thêm khảo sát thành phần | 1d? | 2020-01-08 | 2020-01-08 |  |  |
| 17 | 1.1.1.3.4 | **Quản lý phản hồi** | 1d? | 2020-01-10 | 2020-01-10 |  |  |
| 18 |  | Danh sách phản hồi | 1d? | 2020-01-10 | 2020-01-10 |  |  |
| 19 |  | Xuất dữ liệu ra file (excel, csv) | 1d? | 2020-01-10 | 2020-01-10 |  |  |
| 20 | 1.1.1.3.5 | **Thống kê khảo sát** | 1d? | 2020-01-11 | 2020-01-11 |  |  |
| 21 |  | Vẽ biểu đồ theo khảo sát | 1d? | 2020-01-11 | 2020-01-11 |  |  |
| 22 |  | Thống kê khảo sát thành phần | 1d? | 2020-01-11 | 2020-01-11 |  |  |
| 23 | 1.1.1.3.6 | **Quản lý nhóm thiết bị** | 1d? | 2020-01-09 | 2020-01-09 |  |  |
| 24 |  | Danh sách | 1d? | 2020-01-09 | 2020-01-09 |  |  |
| 25 |  | Thêm mới | 1d? | 2020-01-09 | 2020-01-09 |  |  |
| 26 | 1.1.1.3.7 | **Quản lý thiết bị** | 1d? | 2020-01-09 | 2020-01-09 |  |  |
| 27 |  | Danh sách thiết bị | 1d? | 2020-01-09 | 2020-01-09 |  |  |
| 28 | 1.1.1.3.7.2 | **Thêm mới thiết bị** | 1d? | 2019-11-13 | 2019-11-13 |  | 0d |
| 29 | 1.1.1.3.7.2.1 | **Web, email** | 1d? | 2019-11-13 | 2019-11-13 |  | 0d |
| 30 |  | Tạo địa chỉ cho trang khảo sát | 1d? | 2019-11-13 | 2019-11-13 |  |  |
| 31 | 1.1.1.3.7.2.2 | **Kiosk** | 1d? | 2019-11-13 | 2019-11-13 |  | 0d |
| 32 |  | Tạo mã QR cho thiết bị | 1d? | 2019-11-13 | 2019-11-13 |  |  |
| 33 | 1.1.1.3.8 | **Quản lý khách hàng** | 1d? | 2020-01-09 | 2020-01-09 |  |  |
| 34 |  | Danh sách | 1d? | 2020-01-09 | 2020-01-09 |  |  |
| 35 |  | Thêm mới | 1d? | 2020-01-09 | 2020-01-09 |  |  |
| 36 |  | Nhập dữ liệu từ file | 1d? | 2020-01-09 | 2020-01-09 |  |  |
| 37 |  | Mời khách hàng khảo sát | 1d? | 2020-01-09 | 2020-01-09 |  |  |
| 38 |  | Danh sách mời khảo sát | 1d? | 2020-01-09 | 2020-01-09 |  |  |
| 39 | 1.1.1.3.9 | **Chương trình khuyến mãi** | 1d? | 2020-01-10 | 2020-01-10 |  |  |
| 40 |  | Danh sách chương trình | 1d? | 2020-01-10 | 2020-01-10 |  |  |
| 41 |  | Thêm mới chương trình | 1d? | 2020-01-10 | 2020-01-10 |  |  |
| 42 |  | Danh sách mã thưởng | 1d? | 2020-01-10 | 2020-01-10 |  |  |
| 43 |  | Kiểm tra mã | 1d? | 2020-01-10 | 2020-01-10 |  |  |
| 44 | 1.1.1.3.10 | **Quản lý bộ sưu tập** | 1d? | 2020-01-10 | 2020-01-10 |  |  |
| 45 |  | Danh sách | 1d? | 2020-01-10 | 2020-01-10 |  |  |
| 46 |  | Thêm mới | 1d? | 2020-01-10 | 2020-01-10 |  |  |
| 47 |  | Tải lên ảnh | 1d? | 2020-01-10 | 2020-01-10 |  |  |
| 48 | 1.1.1.3.11 | **Quản lý theme** | 1d? | 2020-01-10 | 2020-01-10 |  |  |
| 49 |  | Danh sách | 1d? | 2020-01-10 | 2020-01-10 |  |  |
| 50 |  | Thêm mới | 1d? | 2020-01-10 | 2020-01-10 |  |  |
| 51 | 1.1.1.3.12 | **Quản lý lời cảm ơn** | 1d? | 2020-01-11 | 2020-01-11 |  |  |
| 52 |  | Danh sách | 1d? | 2020-01-11 | 2020-01-11 |  |  |
| 53 |  | Thêm mới | 1d? | 2020-01-11 | 2020-01-11 |  |  |
| 54 | 1.1.1.3.13 | **Cấu hình** | 1d? | 2020-01-11 | 2020-01-11 |  |  |
| 55 |  | Ngôn ngữ | 1d? | 2020-01-11 | 2020-01-11 |  |  |
| 56 |  | Cấu hình chung | 1d? | 2020-01-11 | 2020-01-11 |  |  |
| 57 | 1.1.1.3.14 | **Trang cộng đồng** | 1d? | 2020-01-11 | 2020-01-11 |  |  |
| 58 |  | Cấu hình thông tin | 1d? | 2020-01-11 | 2020-01-11 |  |  |
| 59 |  | Danh sách bảng tin | 1d? | 2020-01-11 | 2020-01-11 |  |  |
| 60 |  | Thêm mới bảng tin | 1d? | 2020-01-11 | 2020-01-11 |  |  |
| 61 | 1.1.2 | **Lập trình** | 67d | 2019-11-30 A | 2020-02-28 | 9% |  |
| 62 |  | Khởi tạo môi trường | 1d | 2019-11-30 A | 2019-11-30 A | 100% |  |
| 63 |  | Viết tầng entities | 4d | 2019-12-01 A | 2019-12-04 | 25% |  |
| 64 |  | Viết tầng repository | 6d | 2019-12-05 A | 2019-12-12 | 17% |  |
| 65 |  | Viết tầng service | 6d | 2019-12-13 A | 2019-12-20 | 17% |  |
| 66 | 1.1.2.5 | **Viết tầng controller** | 17d | 2020-01-09 | 2020-01-30 |  |  |
| 67 |  | Đối tượng phản hồi | 0.5d | 2020-01-09 | 2020-01-09 |  |  |
| 68 |  | Khảo sát | 2d | 2020-01-09 | 2020-01-10 |  |  |
| 69 |  | Phản hồi | 2d | 2020-01-13 | 2020-01-14 |  |  |
| 70 |  | Thống kê khảo sát | 1d | 2020-01-09 | 2020-01-09 |  |  |

| ID | WBS | Task | Duration | Start | Finish |
| --- | --- | --- | --- | --- | --- |
| 71 |  | Nhóm thiết bị | 0.5d | 2020-01-09 | 2020-01-09 |
| 72 |  | Thiết bị | 1.5d | 2020-01-10 | 2020-01-11 |
| 73 |  | Khách hàng | 2d | 2020-01-13 | 2020-01-14 |
| 74 |  | Mã thưởng | 2d | 2020-01-10 | 2020-01-11 |
| 75 |  | Bộ sưu tập | 0.5d | 2020-01-14 | 2020-01-14 |
| 76 |  | Theme | 0.5d | 2020-01-14 | 2020-01-14 |
| 77 |  | Lời cảm ơn | 0.5d | 2020-01-15 | 2020-01-15 |
| 78 |  | Cấu hình | 1d | 2020-01-15 | 2020-01-15 |
| 79 |  | Trang cộng đồng | 2d | 2020-01-16 | 2020-01-17 |
| 80 | 1.1.2.6 | **Tạo giao diện thực** | 29d | 2020-01-08 | 2020-02-14 |
| 81 |  | Chức năng đăng nhập | 1d | 2020-01-08 | 2020-01-08 |
| 82 |  | Chức năng quản lý đối tượng phản hồi | 1d | 2020-01-08 | 2020-01-08 |
| 83 |  | Chức năng quản lý khảo sát | 1d | 2020-01-08 | 2020-01-08 |
| 84 |  | Quản lý phản hồi | 1d | 2020-01-08 | 2020-01-08 |
| 85 |  | Thống kê khảo sát | 1d | 2020-01-08 | 2020-01-08 |
| 86 |  | Quản lý nhóm thiết bị | 1d | 2020-01-08 | 2020-01-08 |
| 87 |  | Quản lý thiết bị | 1d | 2020-01-08 | 2020-01-08 |
| 88 |  | Quản lý khách hàng | 1d | 2020-01-08 | 2020-01-08 |
| 89 |  | Chương trình khuyến mãi | 1d | 2020-01-08 | 2020-01-08 |
| 90 |  | Quản lý bộ sưu tập | 1d | 2020-01-08 | 2020-01-08 |
| 91 |  | Quản lý theme | 1d | 2020-01-08 | 2020-01-08 |
| 92 |  | Quản lý lời cảm ơn | 1d | 2020-01-08 | 2020-01-08 |
| 93 |  | Cấu hình | 1d | 2020-01-08 | 2020-01-08 |
| 94 |  | Trang cộng đồng | 1d | 2020-01-08 | 2020-01-08 |
| 95 |  | Kiểm thử chức năng | 3d | 2019-11-30 | 2019-12-03 |
| 96 |  | Ứng dụng kiosk | 1d? | 2019-11-30 | 2019-11-30 |

## Version 2 (saved 2020-01-10, file Ke Hoach SRS (2016).mpp)

Note of the change: cap nhat ke hoach

Last finish 2020-03-04 → 2020-03-10 (+6d). Complete tasks 3 → 117.

Added:

| ID | Task | Duration | Start | Finish | Constraint | Resources |
| --- | --- | --- | --- | --- | --- | --- |
| 6 | Viết tài liệu mô tả Database | 2d | 2020-01-07 A | 2020-01-08 A | start no earlier than 2020-01-07 | Huấn NT |
| 60 | **Khảo sát(Survey)** | 1d | 2019-12-10 A | 2019-12-10 A |  | Thành LD |
| 61 | SurveyTotal (Khảo sát tổng) | 1d | 2019-12-10 A | 2019-12-10 A | start no earlier than 2019-12-10 |  |
| 62 | Survey (Khảo sát) | 1d | 2019-12-10 A | 2019-12-10 A | start no earlier than 2019-12-10 |  |
| 63 | Element Survey (Khảo sát thành phần) | 1d | 2019-12-10 A | 2019-12-10 A | start no earlier than 2019-12-10 |  |
| 64 | ContactField (Trường khảo sát) | 1d | 2019-12-10 A | 2019-12-10 A | start no earlier than 2019-12-10 |  |
| 65 | **Phản hồi(Answer)** | 1d | 2019-12-11 A | 2019-12-11 A |  | Thành LD |
| 66 | AnswerContact | 1d | 2019-12-11 A | 2019-12-11 A | start no earlier than 2019-12-11 |  |
| 67 | AnswerGroupLevel | 1d | 2019-12-11 A | 2019-12-11 A | start no earlier than 2019-12-11 |  |
| 68 | AnswerMultiChoice | 1d | 2019-12-11 A | 2019-12-11 A | start no earlier than 2019-12-11 |  |
| 69 | AnswerOpen | 1d | 2019-12-11 A | 2019-12-11 A | start no earlier than 2019-12-11 |  |
| 70 | AnswerSingleChoice | 1d | 2019-12-11 A | 2019-12-11 A | start no earlier than 2019-12-11 |  |
| 71 | AnswerTotal | 1d | 2019-12-11 A | 2019-12-11 A | start no earlier than 2019-12-11 |  |
| 72 | **Phản hồi thành phần(ElementAnswer)** | 1d | 2019-12-12 A | 2019-12-12 A |  | Thành LD |
| 73 | ElementAnswerLevel | 1d | 2019-12-12 A | 2019-12-12 A | start no earlier than 2019-12-12 |  |
| 74 | ElementAnswerMultiChoice | 1d | 2019-12-12 A | 2019-12-12 A | start no earlier than 2019-12-12 |  |
| 75 | ElementAnswerOpen | 1d | 2019-12-12 A | 2019-12-12 A | start no earlier than 2019-12-12 |  |
| 76 | ElementAnswerSingleChoice | 1d | 2019-12-12 A | 2019-12-12 A | start no earlier than 2019-12-12 |  |
| 77 | **Tổ chức (Company)** | 1d | 2019-12-10 A | 2019-12-10 A |  | Hiếu NM |
| 78 | Company | 1d | 2019-12-10 A | 2019-12-10 A | start no earlier than 2019-12-10 |  |
| 79 | ObjectSurvey | 1d | 2019-12-10 A | 2019-12-10 A | start no earlier than 2019-12-10 |  |
| 80 | PublicNews | 1d | 2019-12-10 A | 2019-12-10 A | start no earlier than 2019-12-10 |  |
| 81 | User | 1d | 2019-12-10 A | 2019-12-10 A | start no earlier than 2019-12-10 |  |
| 82 | **Thiết bị(Device)** | 1d | 2019-12-10 A | 2019-12-10 A |  | Hiếu NM |
| 83 | DeviceKiosk | 1d | 2019-12-10 A | 2019-12-10 A | start no earlier than 2019-12-10 |  |
| 84 | DeviceWeb | 1d | 2019-12-10 A | 2019-12-10 A | start no earlier than 2019-12-10 |  |
| 85 | GroupDevice | 1d | 2019-12-10 A | 2019-12-10 A | start no earlier than 2019-12-10 |  |
| 86 | **Customer(Khách hàng)** | 1d | 2019-12-11 A | 2019-12-11 A |  | Hiếu NM |
| 87 | Customer(Khách hàng) | 1d | 2019-12-11 A | 2019-12-11 A | start no earlier than 2019-12-11 |  |
| 88 | InvitedSurvey | 1d | 2019-12-11 A | 2019-12-11 A | start no earlier than 2019-12-11 |  |
| 89 | RewardCode(Mã thưởng) | 1d | 2019-12-11 A | 2019-12-11 A | start no earlier than 2019-12-11 |  |
| 90 | RewardProgram(Chương trình khuyến mãi) | 1d | 2019-12-11 A | 2019-12-11 A | start no earlier than 2019-12-11 |  |
| 91 | **Collection(Bộ sưu tập)** | 1d | 2019-12-12 A | 2019-12-12 A |  | Hiếu NM |
| 92 | AppCollection | 1d | 2019-12-12 A | 2019-12-12 A | start no earlier than 2019-12-12 |  |
| 93 | CollectionItem | 1d | 2019-12-12 A | 2019-12-12 A | start no earlier than 2019-12-12 |  |
| 94 | Thank | 1d | 2019-12-12 A | 2019-12-12 A | start no earlier than 2019-12-12 |  |
| 95 | Theme | 1d | 2019-12-12 A | 2019-12-12 A | start no earlier than 2019-12-12 |  |
| 97 | **Khảo sát(Survey)** | 1d | 2019-12-12 A | 2019-12-12 A |  | Thành LD |
| 98 | SurveyTotal (Khảo sát tổng) | 1d | 2019-12-12 A | 2019-12-12 A | start no earlier than 2019-12-12 |  |
| 99 | Survey (Khảo sát) | 1d | 2019-12-12 A | 2019-12-12 A | start no earlier than 2019-12-12 |  |
| 100 | Element Survey (Khảo sát thành phần) | 1d | 2019-12-12 A | 2019-12-12 A | start no earlier than 2019-12-12 |  |
| 101 | ContactField (Trường khảo sát) | 1d | 2019-12-12 A | 2019-12-12 A | start no earlier than 2019-12-12 |  |
| 102 | **Phản hồi(Answer)** | 2d | 2019-12-13 A | 2019-12-16 A |  | Thành LD |
| 103 | AnswerContact | 1d | 2019-12-13 A | 2019-12-13 A | start no earlier than 2019-12-13 |  |
| 104 | AnswerGroupLevel | 1d | 2019-12-13 A | 2019-12-13 A | start no earlier than 2019-12-13 |  |
| 105 | AnswerMultiChoice | 1d | 2019-12-13 A | 2019-12-13 A | start no earlier than 2019-12-13 |  |
| 106 | AnswerOpen | 1d | 2019-12-14 A | 2019-12-16 A | start no earlier than 2019-12-14 |  |
| 107 | AnswerSingleChoice | 1d | 2019-12-14 A | 2019-12-16 A | start no earlier than 2019-12-14 |  |
| 108 | AnswerTotal | 1d | 2019-12-14 A | 2019-12-16 A | start no earlier than 2019-12-14 |  |
| 109 | **Phản hồi thành phần(ElementAnswer)** | 1d | 2019-12-16 A | 2019-12-16 A |  | Thành LD |
| 110 | ElementAnswerLevel | 1d | 2019-12-16 A | 2019-12-16 A | start no earlier than 2019-12-16 |  |
| 111 | ElementAnswerMultiChoice | 1d | 2019-12-16 A | 2019-12-16 A | start no earlier than 2019-12-16 |  |
| 112 | ElementAnswerOpen | 1d | 2019-12-16 A | 2019-12-16 A | start no earlier than 2019-12-16 |  |
| 113 | ElementAnswerSingleChoice | 1d | 2019-12-16 A | 2019-12-16 A | start no earlier than 2019-12-16 |  |
| 114 | **Tổ chức (Company)** | 1d | 2019-12-12 A | 2019-12-12 A |  | Hiếu NM |
| 115 | Company | 1d | 2019-12-12 A | 2019-12-12 A | start no earlier than 2019-12-12 |  |
| 116 | ObjectSurvey | 1d | 2019-12-12 A | 2019-12-12 A | start no earlier than 2019-12-12 |  |
| 117 | PublicNews | 1d | 2019-12-12 A | 2019-12-12 A | start no earlier than 2019-12-12 |  |
| 118 | User | 1d | 2019-12-12 A | 2019-12-12 A | start no earlier than 2019-12-12 |  |
| 119 | **Thiết bị(Device)** | 1d | 2019-12-13 A | 2019-12-13 A |  | Hiếu NM |
| 120 | DeviceKiosk | 1d | 2019-12-13 A | 2019-12-13 A | start no earlier than 2019-12-13 |  |
| 121 | DeviceWeb | 1d | 2019-12-13 A | 2019-12-13 A | start no earlier than 2019-12-13 |  |
| 122 | GroupDevice | 1d | 2019-12-13 A | 2019-12-13 A | start no earlier than 2019-12-13 |  |
| 123 | **Customer(Khách hàng)** | 1d | 2019-12-14 A | 2019-12-16 A |  | Hiếu NM |
| 124 | Customer(Khách hàng) | 1d | 2019-12-14 A | 2019-12-16 A | start no earlier than 2019-12-14 |  |
| 125 | InvitedSurvey | 1d | 2019-12-14 A | 2019-12-16 A | start no earlier than 2019-12-14 |  |
| 126 | RewardCode(Mã thưởng) | 1d | 2019-12-14 A | 2019-12-16 A | start no earlier than 2019-12-14 |  |
| 127 | RewardProgram(Chương trình khuyến mãi) | 1d | 2019-12-14 A | 2019-12-16 A | start no earlier than 2019-12-14 |  |
| 128 | **Collection(Bộ sưu tập)** | 1d | 2019-12-16 A | 2019-12-16 A |  | Hiếu NM |
| 129 | AppCollection | 1d | 2019-12-16 A | 2019-12-16 A | start no earlier than 2019-12-16 |  |
| 130 | CollectionItem | 1d | 2019-12-16 A | 2019-12-16 A | start no earlier than 2019-12-16 |  |
| 131 | Thank | 1d | 2019-12-16 A | 2019-12-16 A | start no earlier than 2019-12-16 |  |
| 132 | Theme | 1d | 2019-12-16 A | 2019-12-16 A | start no earlier than 2019-12-16 |  |
| 134 | **Khảo sát(Survey)** | 1d | 2019-12-17 A | 2019-12-17 A |  | Thành LD |
| 135 | SurveyTotal (Khảo sát tổng) | 1d | 2019-12-17 A | 2019-12-17 A | start no earlier than 2019-12-17 |  |
| 136 | Survey (Khảo sát) | 1d | 2019-12-17 A | 2019-12-17 A | start no earlier than 2019-12-17 |  |
| 137 | Element Survey (Khảo sát thành phần) | 1d | 2019-12-17 A | 2019-12-17 A | start no earlier than 2019-12-17 |  |
| 138 | ContactField (Trường khảo sát) | 1d | 2019-12-17 A | 2019-12-17 A | start no earlier than 2019-12-17 |  |
| 139 | **Phản hồi(Answer)** | 2d | 2019-12-18 A | 2019-12-19 A |  | Thành LD |
| 140 | AnswerContact | 2d | 2019-12-18 A | 2019-12-19 A | start no earlier than 2019-12-18 |  |
| 141 | AnswerGroupLevel | 2d | 2019-12-18 A | 2019-12-19 A | start no earlier than 2019-12-18 |  |
| 142 | AnswerMultiChoice | 2d | 2019-12-18 A | 2019-12-19 A | start no earlier than 2019-12-18 |  |
| 143 | AnswerOpen | 2d | 2019-12-18 A | 2019-12-19 A | start no earlier than 2019-12-18 |  |
| 144 | AnswerSingleChoice | 2d | 2019-12-18 A | 2019-12-19 A | start no earlier than 2019-12-18 |  |
| 145 | AnswerTotal | 2d | 2019-12-18 A | 2019-12-19 A | start no earlier than 2019-12-18 |  |
| 146 | **Phản hồi thành phần(ElementAnswer)** | 1d | 2019-12-20 A | 2019-12-20 A |  | Thành LD |
| 147 | ElementAnswerLevel | 1d | 2019-12-20 A | 2019-12-20 A | start no earlier than 2019-12-20 |  |
| 148 | ElementAnswerMultiChoice | 1d | 2019-12-20 A | 2019-12-20 A | start no earlier than 2019-12-20 |  |
| 149 | ElementAnswerOpen | 1d | 2019-12-20 A | 2019-12-20 A | start no earlier than 2019-12-20 |  |
| 150 | ElementAnswerSingleChoice | 1d | 2019-12-20 A | 2019-12-20 A | start no earlier than 2019-12-20 |  |
| 151 | **Tổ chức (Company)** | 1d | 2019-12-17 A | 2019-12-17 A |  | Hiếu NM |
| 152 | Company | 1d | 2019-12-17 A | 2019-12-17 A | start no earlier than 2019-12-17 |  |
| 153 | ObjectSurvey | 1d | 2019-12-17 A | 2019-12-17 A | start no earlier than 2019-12-17 |  |
| 154 | PublicNews | 1d | 2019-12-17 A | 2019-12-17 A | start no earlier than 2019-12-17 |  |
| 155 | User | 1d | 2019-12-17 A | 2019-12-17 A | start no earlier than 2019-12-17 |  |
| 156 | **Thiết bị(Device)** | 1d | 2019-12-18 A | 2019-12-18 A |  | Hiếu NM |
| 157 | DeviceKiosk | 1d | 2019-12-18 A | 2019-12-18 A | start no earlier than 2019-12-18 |  |
| 158 | DeviceWeb | 1d | 2019-12-18 A | 2019-12-18 A | start no earlier than 2019-12-18 |  |
| 159 | GroupDevice | 1d | 2019-12-18 A | 2019-12-18 A | start no earlier than 2019-12-18 |  |
| 160 | **Customer(Khách hàng)** | 1d | 2019-12-19 A | 2019-12-19 A |  | Hiếu NM |
| 161 | Customer(Khách hàng) | 1d | 2019-12-19 A | 2019-12-19 A | start no earlier than 2019-12-19 |  |
| 162 | InvitedSurvey | 1d | 2019-12-19 A | 2019-12-19 A | start no earlier than 2019-12-19 |  |
| 163 | RewardCode(Mã thưởng) | 1d | 2019-12-19 A | 2019-12-19 A | start no earlier than 2019-12-19 |  |
| 164 | RewardProgram(Chương trình khuyến mãi) | 1d | 2019-12-19 A | 2019-12-19 A | start no earlier than 2019-12-19 |  |
| 165 | **Collection(Bộ sưu tập)** | 1d | 2019-12-20 A | 2019-12-20 A |  | Hiếu NM |
| 166 | AppCollection | 1d | 2019-12-20 A | 2019-12-20 A | start no earlier than 2019-12-20 |  |
| 167 | CollectionItem | 1d | 2019-12-20 A | 2019-12-20 A | start no earlier than 2019-12-20 |  |
| 168 | Thank | 1d | 2019-12-20 A | 2019-12-20 A | start no earlier than 2019-12-20 |  |
| 169 | Theme | 1d | 2019-12-20 A | 2019-12-20 A | start no earlier than 2019-12-20 |  |

Removed: 7 Chức năng đăng nhập; 8 Đăng nhập; 9 Đăng ký; 45 Danh sách; 46 Thêm mới

Changed:

| ID | Task | Start | Finish | Duration | Complete | Total float | Other |
| --- | --- | --- | --- | --- | --- | --- | --- |
| 1 | **Dự án đánh giá chất lượng dịch vụ** | 2019-11-30 → 2019-11-15 A (-15d) | 2020-03-04 → 2020-03-10 (+6d) | 70d? → 84d? | 7% → 68% |  |  |
| 2 | **Website quản trị** | 2019-11-30 → 2019-11-15 A (-15d) | 2019-11-30 → 2020-02-22 (+84d) | 1d? → 73d? | 7% → 74% |  |  |
| 3 | **Phân tích thiết kế** | 2019-11-30 → 2019-11-15 A (-15d) | 2019-11-30 → 2020-01-11 (+42d) | 1d? → 42d? | 5% → 82% | none → 42d |  |
| 4 | Yêu cầu bài toán | 2019-11-13 A → 2019-11-15 A (+2d) | 2019-11-13 A → 2019-11-15 A (+2d) |  |  |  | constraint none → start no earlier than 2019-11-15 |
| 5 | Xây dựng Database | 2019-11-13 A → 2019-11-27 A (+14d) | 2019-11-13 A → 2019-11-29 A (+16d) | 1d → 3d |  |  | constraint none → start no earlier than 2019-11-27 |
| 7 | **Viết tài liệu mô tả chức năng** | 2020-01-08 → 2019-11-15 (-54d) |  | 4d? → 42d? | 0% → 79% |  |  |
| 8 | **Chức năng quản lý đối tượng phản hồi** | 2020-01-09 A | 2020-01-09 A | 1d? → 1d | 0% → 100% |  |  |
| 9 | Danh sách đối tượng | 2020-01-09 A | 2020-01-09 A | 1d? → 1d | 0% → 100% |  | constraint none → start no earlier than 2020-01-09 |
| 10 | Thêm mới đối tượng | 2020-01-09 A | 2020-01-09 A | 1d? → 1d | 0% → 100% |  | constraint none → start no earlier than 2020-01-09 |
| 11 | **Chức năng quản lý khảo sát** | 2020-01-08 A | 2020-01-09 → 2020-01-08 A (-1d) | 2d? → 1d | 0% → 100% |  |  |
| 12 | Danh sách khảo sát | 2020-01-08 A | 2020-01-08 A | 1d? → 1d | 0% → 100% |  | constraint none → start no earlier than 2020-01-08 |
| 13 | Thêm mới khảo sát | 2020-01-08 A | 2020-01-08 A | 1d? → 1d | 0% → 100% |  | constraint none → start no earlier than 2020-01-08 |
| 14 | Thêm khảo sát thành phần | 2020-01-08 A | 2020-01-08 A | 1d? → 1d | 0% → 100% |  | constraint none → start no earlier than 2020-01-08 |
| 15 | **Quản lý phản hồi** | 2020-01-10 A | 2020-01-10 A | 1d? → 1d | 0% → 100% |  |  |
| 16 | Danh sách phản hồi | 2020-01-10 A | 2020-01-10 A | 1d? → 1d | 0% → 100% |  | constraint none → start no earlier than 2020-01-10 |
| 17 | Xuất dữ liệu ra file (excel, csv) | 2020-01-10 A | 2020-01-10 A | 1d? → 1d | 0% → 100% |  | constraint none → start no earlier than 2020-01-10 |
| 21 | **Quản lý nhóm thiết bị** | 2020-01-09 A | 2020-01-09 A | 1d? → 1d | 0% → 100% |  |  |
| 22 | Danh sách | 2020-01-09 A | 2020-01-09 A | 1d? → 1d | 0% → 100% |  | constraint none → start no earlier than 2020-01-09 |
| 23 | Thêm mới | 2020-01-09 A | 2020-01-09 A | 1d? → 1d | 0% → 100% |  | constraint none → start no earlier than 2020-01-09 |
| 24 | **Quản lý thiết bị** | 2020-01-09 A | 2020-01-09 A | 1d? → 1d | 0% → 100% |  |  |
| 25 | Danh sách thiết bị | 2020-01-09 A | 2020-01-09 A | 1d? → 1d | 0% → 100% |  | constraint none → start no earlier than 2020-01-09 |
| 26 | **Thêm mới thiết bị** | 2019-11-13 → 2020-01-09 A (+57d) | 2019-11-13 → 2020-01-09 A (+57d) | 1d? → 1d | 0% → 100% | 0d → none |  |
| 27 | **Web, email** | 2019-11-13 → 2020-01-09 A (+57d) | 2019-11-13 → 2020-01-09 A (+57d) | 1d? → 1d | 0% → 100% | 0d → none |  |
| 28 | Tạo địa chỉ cho trang khảo sát | 2019-11-13 → 2020-01-09 A (+57d) | 2019-11-13 → 2020-01-09 A (+57d) | 1d? → 1d | 0% → 100% |  | constraint none → start no earlier than 2020-01-09 |
| 29 | **Kiosk** | 2019-11-13 → 2020-01-09 A (+57d) | 2019-11-13 → 2020-01-09 A (+57d) | 1d? → 1d | 0% → 100% | 0d → none |  |
| 30 | Tạo mã QR cho thiết bị | 2019-11-13 → 2020-01-09 A (+57d) | 2019-11-13 → 2020-01-09 A (+57d) | 1d? → 1d | 0% → 100% |  | constraint none → start no earlier than 2020-01-09 |
| 31 | **Quản lý khách hàng** | 2020-01-09 A | 2020-01-09 A | 1d? → 1d | 0% → 100% |  |  |
| 32 | Danh sách | 2020-01-09 A | 2020-01-09 A | 1d? → 1d | 0% → 100% |  | constraint none → start no earlier than 2020-01-09 |
| 33 | Thêm mới | 2020-01-09 A | 2020-01-09 A | 1d? → 1d | 0% → 100% |  | constraint none → start no earlier than 2020-01-09 |
| 34 | Nhập dữ liệu từ file | 2020-01-09 A | 2020-01-09 A | 1d? → 1d | 0% → 100% |  | constraint none → start no earlier than 2020-01-09 |
| 35 | Mời khách hàng khảo sát | 2020-01-09 A | 2020-01-09 A | 1d? → 1d | 0% → 100% |  | constraint none → start no earlier than 2020-01-09 |
| 36 | Danh sách mời khảo sát | 2020-01-09 A | 2020-01-09 A | 1d? → 1d | 0% → 100% |  | constraint none → start no earlier than 2020-01-09 |
| 37 | **Chương trình khuyến mãi** | 2020-01-10 A | 2020-01-10 A | 1d? → 1d | 0% → 100% |  |  |
| 38 | Danh sách chương trình | 2020-01-10 A | 2020-01-10 A | 1d? → 1d | 0% → 100% |  | constraint none → start no earlier than 2020-01-10 |
| 39 | Thêm mới chương trình | 2020-01-10 A | 2020-01-10 A | 1d? → 1d | 0% → 100% |  | constraint none → start no earlier than 2020-01-10 |
| 40 | Danh sách mã thưởng | 2020-01-10 A | 2020-01-10 A | 1d? → 1d | 0% → 100% |  | constraint none → start no earlier than 2020-01-10 |
| 41 | Kiểm tra mã | 2020-01-10 A | 2020-01-10 A | 1d? → 1d | 0% → 100% |  | constraint none → start no earlier than 2020-01-10 |
| 42 | **Quản lý bộ sưu tập** | 2020-01-10 A | 2020-01-10 A | 1d? → 1d | 0% → 100% |  |  |
| 43 | Tải lên ảnh | 2020-01-10 A | 2020-01-10 A | 1d? → 1d | 0% → 100% |  | constraint none → start no earlier than 2020-01-10 |
| 44 | **Quản lý theme** | 2020-01-10 A | 2020-01-10 A | 1d? → 1d | 0% → 100% |  |  |
| 45 | Danh sách | 2020-01-10 A | 2020-01-10 A | 1d? → 1d | 0% → 100% |  | constraint none → start no earlier than 2020-01-10 |
| 46 | Thêm mới | 2020-01-10 A | 2020-01-10 A | 1d? → 1d | 0% → 100% |  | constraint none → start no earlier than 2020-01-10 |
| 47 | **Quản lý lời cảm ơn** | 2020-01-11 A | 2020-01-11 A | 1d? → 1d | 0% → 100% |  |  |
| 48 | Danh sách | 2020-01-11 A | 2020-01-11 A | 1d? → 1d | 0% → 100% |  | constraint none → start no earlier than 2020-01-11 |
| 49 | Thêm mới | 2020-01-11 A | 2020-01-11 A | 1d? → 1d | 0% → 100% |  | constraint none → start no earlier than 2020-01-11 |
| 57 | **Lập trình** | 2019-11-30 A → 2019-11-15 (-15d) | 2020-02-28 → 2020-02-21 (-7d) | 67d → 72d | 9% → 72% |  |  |
| 58 | Khởi tạo môi trường | 2019-11-30 A → 2019-12-10 A (+10d) | 2019-11-30 A → 2019-12-10 A (+10d) |  |  |  | constraint none → start no earlier than 2019-12-10 |
| 59 | **Viết tầng entities** | 2019-12-01 A → 2019-12-10 A (+9d) | 2019-12-04 → 2019-12-12 A (+8d) | 4d → 3d | 25% → 100% |  |  |
| 96 | **Viết tầng repository** | 2019-12-05 A → 2019-12-12 A (+7d) | 2019-12-12 → 2019-12-16 A (+4d) | 6d → 3d | 17% → 100% |  |  |
| 133 | **Viết tầng service** | 2019-12-13 A → 2019-12-17 A (+4d) | 2019-12-20 A | 6d → 4d | 17% → 100% |  |  |
| 170 | **Viết tầng controller** | 2020-01-09 → 2020-01-13 (+4d) | 2020-01-30 → 2020-01-21 (-9d) | 17d → 7d |  | none → 35d |  |
| 171 | Đối tượng phản hồi | 2020-01-09 → 2020-01-13 (+4d) | 2020-01-09 → 2020-01-13 (+4d) | 0.5d → 1d |  | none → 41d | constraint none → start no earlier than 2020-01-13 |
| 172 | Khảo sát | 2020-01-09 → 2020-01-13 (+4d) | 2020-01-10 → 2020-01-14 (+4d) |  |  | none → 40d | constraint none → start no earlier than 2020-01-13 |
| 173 | Phản hồi | 2020-01-13 → 2020-01-15 (+2d) | 2020-01-14 → 2020-01-16 (+2d) |  |  | none → 38d | constraint none → start no earlier than 2020-01-15 |
| 174 | Thống kê khảo sát | 2020-01-09 → 2020-01-17 (+8d) | 2020-01-09 → 2020-01-20 (+11d) | 1d → 2d |  | none → 36d | constraint none → start no earlier than 2020-01-17; resources Hiếu NM → Thành LD |
| 175 | Nhóm thiết bị | 2020-01-09 → 2020-01-13 (+4d) | 2020-01-09 → 2020-01-13 (+4d) | 0.5d → 1d |  | none → 41d | constraint none → start no earlier than 2020-01-13; resources Huấn NT → Hiếu NM |
| 176 | Thiết bị | 2020-01-10 → 2020-01-13 (+3d) | 2020-01-11 → 2020-01-14 (+3d) | 1.5d → 2d |  | none → 40d | constraint none → start no earlier than 2020-01-13 |
| 177 | Khách hàng | 2020-01-13 → 2020-01-15 (+2d) | 2020-01-14 → 2020-01-16 (+2d) |  |  | none → 38d | constraint none → start no earlier than 2020-01-15 |
| 178 | Mã thưởng | 2020-01-10 → 2020-01-13 (+3d) | 2020-01-11 → 2020-01-16 (+5d) | 2d → 4d |  | none → 38d | constraint none → start no earlier than 2020-01-13 |
| 179 | Bộ sưu tập | 2020-01-14 → 2020-01-17 (+3d) | 2020-01-14 → 2020-01-17 (+3d) | 0.5d → 1d |  | none → 37d | constraint none → start no earlier than 2020-01-17 |
| 180 | Theme | 2020-01-14 → 2020-01-17 (+3d) | 2020-01-14 → 2020-01-17 (+3d) | 0.5d → 1d |  | none → 37d | constraint none → start no earlier than 2020-01-17 |
| 181 | Lời cảm ơn | 2020-01-15 → 2020-01-16 (+1d) | 2020-01-15 → 2020-01-16 (+1d) | 0.5d → 1d |  | none → 38d | constraint none → start no earlier than 2020-01-16; resources Thành LD → Huấn NT |
| 182 | Cấu hình | 2020-01-15 → 2020-01-20 (+5d) | 2020-01-15 → 2020-01-20 (+5d) |  |  | none → 36d | constraint none → start no earlier than 2020-01-20; resources Hiếu NM → Thành LD |
| 183 | Trang cộng đồng | 2020-01-16 → 2020-01-20 (+4d) | 2020-01-17 → 2020-01-21 (+4d) |  |  | none → 35d | constraint none → start no earlier than 2020-01-18 |
| 184 | **Tạo giao diện thực** | 2020-01-08 → 2020-01-31 (+23d) | 2020-02-14 → 2020-02-19 (+5d) | 29d → 14d |  |  |  |
| 185 | Chức năng đăng nhập | 2020-01-08 → 2020-01-31 (+23d) | 2020-01-08 → 2020-01-31 (+23d) |  |  | none → 27d |  |
| 186 | Chức năng quản lý đối tượng phản hồi | 2020-01-08 → 2020-01-31 (+23d) | 2020-01-08 → 2020-01-31 (+23d) |  |  | none → 27d |  |
| 187 | Chức năng quản lý khảo sát | 2020-01-08 → 2020-01-31 (+23d) | 2020-01-08 → 2020-01-31 (+23d) |  |  | none → 27d |  |
| 188 | Quản lý phản hồi | 2020-01-08 → 2020-01-31 (+23d) | 2020-01-08 → 2020-01-31 (+23d) |  |  | none → 27d |  |
| 189 | Thống kê khảo sát | 2020-01-08 → 2020-01-31 (+23d) | 2020-01-08 → 2020-01-31 (+23d) |  |  | none → 27d |  |

| ID | Task | Start | Finish | Duration | Total float | Other |
| --- | --- | --- | --- | --- | --- | --- |
| 190 | Quản lý nhóm thiết bị | 2020-01-08 → 2020-01-31 (+23d) | 2020-01-08 → 2020-01-31 (+23d) |  | none → 27d |  |
| 191 | Quản lý thiết bị | 2020-01-08 → 2020-01-31 (+23d) | 2020-01-08 → 2020-01-31 (+23d) |  | none → 27d |  |
| 192 | Quản lý khách hàng | 2020-01-08 → 2020-01-31 (+23d) | 2020-01-08 → 2020-01-31 (+23d) |  | none → 27d |  |
| 193 | Chương trình khuyến mãi | 2020-01-08 → 2020-01-31 (+23d) | 2020-01-08 → 2020-01-31 (+23d) |  | none → 27d |  |
| 194 | Quản lý bộ sưu tập | 2020-01-08 → 2020-01-31 (+23d) | 2020-01-08 → 2020-01-31 (+23d) |  | none → 27d |  |
| 195 | Quản lý theme | 2020-01-08 → 2020-01-31 (+23d) | 2020-01-08 → 2020-01-31 (+23d) |  | none → 27d |  |
| 196 | Quản lý lời cảm ơn | 2020-01-08 → 2020-01-31 (+23d) | 2020-01-08 → 2020-01-31 (+23d) |  | none → 27d |  |
| 197 | Cấu hình | 2020-01-08 → 2020-01-31 (+23d) | 2020-01-08 → 2020-01-31 (+23d) |  | none → 27d |  |
| 198 | Trang cộng đồng | 2020-01-08 → 2020-01-31 (+23d) | 2020-01-08 → 2020-01-31 (+23d) |  | none → 27d |  |
| 199 | Kiểm thử chức năng | 2019-11-30 → 2020-02-19 (+81d) | 2019-12-03 → 2020-02-20 (+79d) | 3d → 2d | none → 13d | constraint none → start no earlier than 2020-02-19 |
| 200 | Ứng dụng kiosk | 2019-11-30 → 2020-01-31 (+62d) | 2019-11-30 → 2020-02-20 (+82d) | 1d? → 15d? | none → 13d | constraint none → finish no earlier than 2020-02-20 |

## Version 3 (saved 2020-01-10, file Ke Hoach SRS (2007).mpp)

Note of the change: cap nhat ke hoach

Last finish 2020-03-10 → 2020-02-20 (-19d).

Added:

| ID | Task | Duration | Start | Finish | Constraint |
| --- | --- | --- | --- | --- | --- |
| 199 | Tạo giao diện thực | 0d? | 2020-01-31 | 2020-01-31 | must start on 2020-01-31 |
| 200 | Tạo giao diện thực | 0d? | 2020-02-19 | 2020-02-19 | must finish on 2020-02-19 |

Changed:

| ID | Task | Start | Finish | Duration | Total float |
| --- | --- | --- | --- | --- | --- |
| 1 | **Dự án đánh giá chất lượng dịch vụ** |  | 2020-03-10 → 2020-02-20 (-19d) | 84d? → 71d? | none → 0d |
| 2 | **Website quản trị** |  | 2020-02-22 → 2020-02-20 (-2d) | 73d? → 71d? | none → 0d |
| 7 | **Viết tài liệu mô tả chức năng** | 2019-11-15 → 2020-01-07 A (+53d) |  | 42d? → 5d? | none → 29d |
| 18 | **Thống kê khảo sát** | 2020-01-11 → 2020-01-07 (-4d) | 2020-01-11 → 2020-01-07 (-4d) |  | none → 33d |
| 19 | Vẽ biểu đồ theo khảo sát | 2020-01-11 → 2020-01-07 (-4d) | 2020-01-11 → 2020-01-07 (-4d) |  | 42d → 33d |
| 20 | Thống kê khảo sát thành phần | 2020-01-11 → 2020-01-07 (-4d) | 2020-01-11 → 2020-01-07 (-4d) |  | 42d → 33d |
| 50 | **Cấu hình** | 2020-01-11 → 2020-01-07 (-4d) | 2020-01-11 → 2020-01-07 (-4d) |  | none → 33d |
| 51 | Ngôn ngữ | 2020-01-11 → 2020-01-07 (-4d) | 2020-01-11 → 2020-01-07 (-4d) |  | 42d → 33d |
| 52 | Cấu hình chung | 2020-01-11 → 2020-01-07 (-4d) | 2020-01-11 → 2020-01-07 (-4d) |  | 42d → 33d |
| 53 | **Trang cộng đồng** | 2020-01-11 → 2020-01-07 (-4d) | 2020-01-11 → 2020-01-07 (-4d) |  | none → 33d |
| 54 | Cấu hình thông tin | 2020-01-11 → 2020-01-07 (-4d) | 2020-01-11 → 2020-01-07 (-4d) |  | 42d → 33d |
| 55 | Danh sách bảng tin | 2020-01-11 → 2020-01-07 (-4d) | 2020-01-11 → 2020-01-07 (-4d) |  | 42d → 33d |
| 56 | Thêm mới bảng tin | 2020-01-11 → 2020-01-07 (-4d) | 2020-01-11 → 2020-01-07 (-4d) |  | 42d → 33d |
| 57 | **Lập trình** | 2019-11-15 → 2019-12-10 A (+25d) | 2020-02-21 → 2020-01-21 (-31d) | 72d → 32d | none → 22d |
| 184 | **Tạo giao diện thực** | 2020-01-31 → 2020-01-07 (-24d) | 2020-02-19 → 2020-01-07 (-43d) | 14d → 1d | none → 33d |
| 185 | Chức năng đăng nhập | 2020-01-31 → 2020-01-07 (-24d) | 2020-01-31 → 2020-01-07 (-24d) |  | 27d → 33d |
| 186 | Chức năng quản lý đối tượng phản hồi | 2020-01-31 → 2020-01-07 (-24d) | 2020-01-31 → 2020-01-07 (-24d) |  | 27d → 33d |
| 187 | Chức năng quản lý khảo sát | 2020-01-31 → 2020-01-07 (-24d) | 2020-01-31 → 2020-01-07 (-24d) |  | 27d → 33d |
| 188 | Quản lý phản hồi | 2020-01-31 → 2020-01-07 (-24d) | 2020-01-31 → 2020-01-07 (-24d) |  | 27d → 33d |
| 189 | Thống kê khảo sát | 2020-01-31 → 2020-01-07 (-24d) | 2020-01-31 → 2020-01-07 (-24d) |  | 27d → 33d |
| 190 | Quản lý nhóm thiết bị | 2020-01-31 → 2020-01-07 (-24d) | 2020-01-31 → 2020-01-07 (-24d) |  | 27d → 33d |
| 191 | Quản lý thiết bị | 2020-01-31 → 2020-01-07 (-24d) | 2020-01-31 → 2020-01-07 (-24d) |  | 27d → 33d |
| 192 | Quản lý khách hàng | 2020-01-31 → 2020-01-07 (-24d) | 2020-01-31 → 2020-01-07 (-24d) |  | 27d → 33d |
| 193 | Chương trình khuyến mãi | 2020-01-31 → 2020-01-07 (-24d) | 2020-01-31 → 2020-01-07 (-24d) |  | 27d → 33d |
| 194 | Quản lý bộ sưu tập | 2020-01-31 → 2020-01-07 (-24d) | 2020-01-31 → 2020-01-07 (-24d) |  | 27d → 33d |
| 195 | Quản lý theme | 2020-01-31 → 2020-01-07 (-24d) | 2020-01-31 → 2020-01-07 (-24d) |  | 27d → 33d |
| 196 | Quản lý lời cảm ơn | 2020-01-31 → 2020-01-07 (-24d) | 2020-01-31 → 2020-01-07 (-24d) |  | 27d → 33d |
| 197 | Cấu hình | 2020-01-31 → 2020-01-07 (-24d) | 2020-01-31 → 2020-01-07 (-24d) |  | 27d → 33d |
| 198 | Trang cộng đồng | 2020-01-31 → 2020-01-07 (-24d) | 2020-01-31 → 2020-01-07 (-24d) |  | 27d → 33d |
